# Service_to_bldg_336A

Schedule from MS Project, 2010-04-06 to 2010-11-26, A marks actual dates.

## Calendars

- Standard: Mon-Fri 08:00-12:00, 13:00-17:00; Sat-Sun off.

## Resources

| Resource |
| --- |
| Fosdick_&_Hilmer |

## Schedule

| ID | WBS | Task | Duration | Start | Finish | Predecessors | Complete | Remaining | Total slack | Constraint | Resources | Work | Actual work |
| --- | --- | --- | --- | --- | --- | --- | --- | --- | --- | --- | --- | --- | --- |
| 1 | 1 | **Service_to_bldg_336A** | 169d | 2010-04-06 A | 2010-11-26 |  | 19% | 136.32d | 0d |  |  | 208h | 20.8h |
| 2 | 1.1 | Received RFP | 15d | 2010-04-06 A | 2010-04-26 A |  | 100% |  |  | finish no earlier than 2010-04-26 |  |  |  |
| 3 | 1.2 | Design | 26d | 2010-04-27 A | 2010-06-01 | 2 | 10% | 23.4d | 0d |  | Fosdick_&_Hilmer | 208h | 20.8h |
| 4 | 1.3 | **Sign contract / submit NTP** | 10d | 2010-04-27 A | 2010-05-10 A |  | 100% |  |  |  |  |  |  |
| 5 | 1.3.1 | Complete JIF | 0.25d | 2010-04-27 A | 2010-04-27 A | 2 | 100% |  |  |  |  |  |  |
| 6 | 1.3.2 | Identify sub-contractor support | 3.75d | 2010-04-27 A | 2010-04-30 A | 5 | 100% |  |  |  |  |  |  |
| 7 | 1.3.3 | Finalize scope & estimate | 6d | 2010-05-03 A | 2010-05-10 A | 6 | 100% |  |  |  |  |  |  |
| 8 | 1.4 | DU Identify/Order long lead materials | 14d | 2010-05-13 A | 2010-06-01 A | 3SS+10d | 100% |  |  | finish no earlier than 2010-06-01 |  |  |  |
| 9 | 1.5 | DU construction RFP | 10d | 2010-06-02 A | 2010-06-15 | 3, 10 | 50% | 5d | 118d |  |  |  |  |
| 10 | 1.6 | DU permitting | 7d | 2010-06-02 | 2010-06-10 | 3 |  |  | 121d |  |  |  |  |
| 11 | 1.7 | ADEC review/approve | 28d | 2010-06-02 | 2010-07-09 | 3 |  |  | 0d |  |  |  |  |
| 12 | 1.8 | DU construction Award | 3d | 2010-07-12 | 2010-07-14 | 11, 9 |  |  | 0d |  |  |  |  |
| 13 | 1.9 | Construction Mobilization | 3d | 2010-07-15 | 2010-07-19 | 12 |  |  | 94d |  |  |  |  |
| 14 | 1.10 | Contractor submittals | 7d | 2010-07-15 | 2010-07-23 | 12 |  |  | 90d |  |  |  |  |
| 15 | 1.11 | Construction | 90d | 2010-07-15 | 2010-11-17 | 12, 8 |  |  | 0d |  |  |  |  |
| 16 | 1.12 | **DU project closeout** | 7d | 2010-11-18 | 2010-11-26 | 15 |  |  | 0d |  |  |  |  |
| 17 | 1.12.1 | Complete commissioning | 7d | 2010-11-18 | 2010-11-26 |  |  |  | 0d |  |  |  |  |
| 18 | 1.12.2 | Record drawings | 7d | 2010-11-18 | 2010-11-26 |  |  |  | 0d |  |  |  |  |
| 19 | 1.12.3 | GIS | 7d | 2010-11-18 | 2010-11-26 |  |  |  | 0d |  |  |  |  |
| 20 | 1.12.4 | O&M | 7d | 2010-11-18 | 2010-11-26 |  |  |  | 0d |  |  |  |  |
