# Service_to_building_3014

Schedule from MS Project, 2010-04-06 to 2010-08-18, A marks actual dates.

## Calendars

- Standard: Mon-Fri 08:00-12:00, 13:00-17:00; Sat-Sun off.

## Schedule

| ID | WBS | Task | Duration | Start | Finish | Predecessors | Complete | Remaining | Total slack | Constraint |
| --- | --- | --- | --- | --- | --- | --- | --- | --- | --- | --- |
| 1 | 1 | **Service to bldg 3014** | 97d | 2010-04-06 A | 2010-08-18 |  | 52% | 46.67d | 0d |  |
| 2 | 1.1 | RFP received by DU | 15d | 2010-04-06 A | 2010-04-26 A |  | 100% |  |  | finish no earlier than 2010-04-26 |
| 3 | 1.2 | Design | 26d | 2010-04-27 A | 2010-06-01 | 2 | 50% | 13d | 56d |  |
| 4 | 1.3 | **Sign contract / submit NTP** | 10d | 2010-04-27 A | 2010-05-10 A |  | 100% |  |  |  |
| 5 | 1.3.1 | Complete JIF | 0.25d | 2010-04-27 A | 2010-04-27 A | 2 | 100% |  |  |  |
| 6 | 1.3.2 | Identify contractor support | 3.75d | 2010-04-27 A | 2010-04-30 A | 5 | 100% |  |  |  |
| 7 | 1.3.3 | Finalize scope & estimate | 6d | 2010-05-03 A | 2010-05-10 A | 6 | 100% |  |  |  |
| 8 | 1.4 | DU Order materials | 14d | 2010-05-13 A | 2010-06-01 A | 3SS+10d | 100% |  |  | finish no earlier than 2010-06-01 |
| 9 | 1.5 | DU permitting | 2d | 2010-06-02 A | 2010-06-03 A | 3 | 100% |  |  |  |
| 10 | 1.6 | DU construction RFP | 7d | 2010-06-04 A | 2010-06-14 A | 9 | 100% |  |  |  |
| 11 | 1.7 | DU construction Award | 10d | 2010-06-15 A | 2010-06-28 A | 10 | 100% |  |  |  |
| 12 | 1.8 | Construction Mobilization | 3d | 2010-06-29 A | 2010-07-01 | 11 | 50% | 1.5d | 34d |  |
| 13 | 1.9 | Contractor submittals | 14d | 2010-06-29 A | 2010-07-16 | 11 | 50% | 7d | 23d |  |
| 14 | 1.10 | Construction | 30d | 2010-06-29 A | 2010-08-09 | 11, 8 | 10% | 27d | 0d |  |
| 15 | 1.11 | **DU project closeout** | 7d | 2010-08-10 | 2010-08-18 | 14 |  |  | 0d |  |
| 16 | 1.11.1 | Complete commissioning | 7d | 2010-08-10 | 2010-08-18 |  |  |  | 0d |  |
| 17 | 1.11.2 | Record drawings | 7d | 2010-08-10 | 2010-08-18 |  |  |  | 0d |  |
| 18 | 1.11.3 | GIS | 7d | 2010-08-10 | 2010-08-18 |  |  |  | 0d |  |
| 19 | 1.11.4 | O&M | 7d | 2010-08-10 | 2010-08-18 |  |  |  | 0d |  |
